Schedule from MS Project, 2015-04-02 to 2016-10-10.
Microsoft

## Calendars

- 标准: Mon-Fri 08:00-12:00, 13:00-17:00; Sat-Sun off.

## Resources

| Resource |
| --- |
| 21 |

## Schedule

| ID | Task | Duration | Start | Finish | Predecessors | Total slack | Free slack | Constraint | Resources | Work | 阶段性输出成果 |
| --- | --- | --- | --- | --- | --- | --- | --- | --- | --- | --- | --- |
| 1 | 项目前期工作 | 40d | 2016-01-11 | 2016-03-07 |  | 0d |  | start no earlier than 2016-01-11 |  |  | 成立项目组，输出详细实施计划 |
| 2 | 项目前期进一步梳理 | 20d | 2016-01-11 | 2016-02-08 |  | 146d |  | start no earlier than 2016-01-11 |  |  |  |
| 3 | 项目组成立 | 2d | 2016-01-14 | 2016-01-18 |  | 151d | 0d | start no earlier than 2016-01-14 |  |  | 确定项目组成员、制定项目开发负责人 |
| 4 | 进一步明确并分析项目建设内容 | 10d | 2016-01-18 | 2016-02-01 | 3 | 151d |  |  |  |  |  |
| 5 | 提交项目实施计划 | 2d | 2016-01-15 | 2016-01-19 |  | 160d |  | start no earlier than 2016-01-15 |  |  | 项目详细实施计划 |
| 6 | 进一步细化需求 | 10d | 2016-01-25 | 2016-02-08 |  | 146d |  | start no earlier than 2016-01-25 |  |  |  |
| 7 | 系统风格设计与确认 | 20d | 2016-01-11 | 2016-02-08 |  | 146d |  | start no earlier than 2016-01-11 |  |  | 用户风格设计图 |
| 8 | 部分系统交互设计 | 20d | 2016-02-01 | 2016-02-29 | 4 | 126d | 0d |  |  |  | 部分系统交互设计框图 |
| 9 | 概要设计阶段 | 20d | 2016-03-07 | 2016-04-04 | 1 | 0d |  |  |  |  | 系统概要设计说明 |
| 10 | 浙江港航云服务应用集成标准规范 | 9d | 2016-03-07 | 2016-03-18 |  | 132d | 0d | start no earlier than 2016-03-07 |  |  |  |
| 11 | 系统架构设计 | 3d | 2016-03-18 | 2016-03-23 | 10 | 132d | 0d |  |  |  | 系统架构图（总体架构、逻辑架构、物理架构） |
| 12 | 系统功能设计 | 2d | 2016-03-23 | 2016-03-25 | 11 | 132d |  | start no earlier than 2015-04-09 |  |  |  |
| 13 | 交互设计完善 | 4d | 2016-03-24 | 2016-03-30 |  | 126d | 0d | start no earlier than 2016-03-24 |  |  | 系统交互设计框图 |
| 14 | 概要设计整合 | 1d | 2016-03-30 | 2016-03-31 | 13 | 126d | 0d |  |  |  | 系统概要设计V1.0版本 |
| 15 | 系统概要设计专家评审 | 1d | 2016-03-31 | 2016-04-01 | 14 | 126d | 0d |  |  |  | 概要设计评审报告意见 |
| 16 | 系统概要设计更改 | 1d | 2016-04-01 | 2016-04-04 | 15 | 126d |  |  |  |  |  |
| 17 | 系统详细设计阶段 | 10d | 2016-04-04 | 2016-04-18 | 9 | 0d |  |  |  |  | 系统详细设计说明书 |
| 18 | 数据库设计 | 4d | 2016-04-04 | 2016-04-08 | 9 | 116d | 0d |  |  |  | PD模型及数据库设计说明书 |
| 19 | 系统模块设计 | 6d | 2016-04-08 | 2016-04-18 | 18 | 116d |  |  |  |  |  |
| 20 | 系统集成与实施阶段 | 44d | 2016-04-18 | 2016-06-17 | 17 | 0d |  |  |  |  |  |
| 21 | 系统总体集成框架 | 10d | 2016-04-18 | 2016-05-02 | 19 | 100d |  |  |  |  |  |
| 22 | 统一用户管理 | 10d | 2016-05-02 | 2016-05-16 | 21 | 90d |  |  | 21 | 80h |  |
| 23 | 统一信息发布 | 10d | 2016-05-02 | 2016-05-16 | 21 | 90d |  |  |  |  |  |
| 24 | 统一接口管理 | 10d | 2016-05-09 | 2016-05-23 |  | 72d | 0d | start no earlier than 2016-05-09 |  |  |  |
| 25 | 个人办公助理 | 5d | 2016-05-23 | 2016-05-30 | 24 | 80d |  |  |  |  |  |
| 26 | 业务系统整合 | 5d | 2016-05-23 | 2016-05-30 | 24 | 80d |  |  |  |  |  |
| 27 | 基于GIS的视频查看 | 3d | 2016-05-23 | 2016-05-26 | 24 | 72d | 0d |  |  |  |  |
| 28 | 综合查询与统计分析 | 10d | 2016-05-23 | 2016-06-06 | 24 | 75d |  |  |  |  |  |
| 29 | 公共信息服务 | 10d | 2016-05-20 | 2016-06-03 |  | 76d |  | start no earlier than 2016-05-20 |  |  |  |
| 30 | 船舶监管与电子报告 | 10d | 2016-05-25 | 2016-06-08 |  | 73d |  | start no earlier than 2016-05-25 |  |  |  |
| 31 | 电子巡航 | 10d | 2016-05-26 | 2016-06-09 | 27 | 72d |  |  |  |  |  |
| 32 | 稽征业务管理系统升级 | 10d | 2016-05-31 | 2016-06-14 |  | 69d |  | start no earlier than 2016-05-31 |  |  |  |
| 33 | 船舶监测预警 | 5d | 2016-05-30 | 2016-06-06 |  | 75d |  | start no earlier than 2016-05-30 |  |  |  |
| 34 | 视频综合管理软件（包括全省视频整合） | 15d | 2016-05-26 | 2016-06-16 |  | 67d |  | start no earlier than 2016-05-26 |  |  |  |
| 35 | 数据中心设备租用服务 | 5d | 2016-06-06 | 2016-06-13 |  | 70d |  | start no earlier than 2016-06-06 |  |  |  |
| 36 | 阿里云租用服务 | 2d | 2016-06-08 | 2016-06-10 |  | 71d |  | start no earlier than 2016-06-08 |  |  |  |
| 37 | 机柜与线路租用 | 5d | 2016-06-01 | 2016-06-08 |  | 73d |  | start no earlier than 2016-06-01 |  |  |  |
| 38 | 系统集成测试与实施阶段 | 11d | 2016-06-02 | 2016-06-17 |  | 66d |  | start no earlier than 2016-06-02 |  |  |  |
| 39 | 系统调试试运行 | 66d | 2016-06-17 | 2016-09-19 | 20 | 0d |  |  |  |  | 系统总体调试报告及试运行报告 |
| 40 | 系统总体部署 | 2d | 2016-06-14 | 2016-06-16 | 32 | 67d | 0d |  |  |  |  |
| 41 | 系统调试 | 10d | 2016-06-16 | 2016-06-30 | 40 | 67d | 0d |  |  |  | 系统调试报告 |
| 42 | 系统试运行 | 55d | 2016-06-30 | 2016-09-15 |  | 17d |  | start no earlier than 2016-06-30 |  |  |  |
| 43 | 用户培训 | 5d | 2016-06-30 | 2016-07-07 | 41 | 67d |  |  |  |  | 用户培训报告 |
| 44 | 项目验收阶段 | 15d | 2016-09-19 | 2016-10-10 | 39 | 0d |  |  |  |  | 通过项目验收，进入项目质保期 |
| 45 | 项目验收资料整理 | 10d | 2015-04-02 | 2015-04-16 |  | 387d |  |  |  |  |  |
| 46 | 项目验收会 | 1d | 2016-08-29 | 2016-08-30 |  | 29d |  | start no earlier than 2016-08-29 |  |  | 进入项目质保期 |
